Schedule from MS Project, 2016-08-29 to 2016-11-22, A marks actual dates.

## Calendars

- Padrão: Mon-Fri 09:00-12:00, 13:00-18:00; Sat-Sun off.

## Resources

| Resource | Rate |
| --- | --- |
| Cliente |  |
| Cristopher | 100 |
| Davi | 100 |
| Vitor | 100 |
| Vagner | 100 |
| Pedro |  |
| Gerente de Projetos | 200 |

## Schedule

| ID | WBS | Task | Duration | Start | Finish | Predecessors | Complete | Remaining | Work | Actual work |
| --- | --- | --- | --- | --- | --- | --- | --- | --- | --- | --- |
| 1 | 1 | **CrowdFunding Project** | 62.12d | 2016-08-29 A | 2016-11-22 |  | 45% | 34.14d | 232h | 106h |
| 2 | 1.1 | **Prospecção** | 10.88d | 2016-08-29 A | 2016-09-12 A |  | 100% |  | 21.5h | 21.5h |
| 3 | 1.1.1 | **PTEC** | 6.75d | 2016-08-29 A | 2016-09-06 A |  | 100% |  | 17h | 17h |
| 4 | 1.1.1.1 | Estudar Domínio de Aplicação | 0.5d | 2016-08-29 A | 2016-08-29 A |  | 100% |  | 2h | 2h |
| 5 | 1.1.1.2 | Encontrar-se com Fornecedor de Requisitos | 1d | 2016-08-29 A | 2016-08-30 A | 4 | 100% |  | 2h | 2h |
| 6 | 1.1.1.3 | Redigir PTEC | 4.12d | 2016-08-30 A | 2016-09-05 A | 5 | 100% |  | 10h | 10h |
| 7 | 1.1.1.4 | Revisar PTEC | 1d | 2016-09-05 A | 2016-09-06 A | 6 | 100% |  | 2h | 2h |
| 8 | 1.1.1.5 | Aprovar PTEC | 0.12d | 2016-09-06 A | 2016-09-06 A | 7 | 100% |  | 1h | 1h |
| 9 | 1.1.2 | **EPT - Estimativa Preliminar de Tamanho** | 3.12d | 2016-09-06 A | 2016-09-09 A |  | 100% |  | 2h | 2h |
| 10 | 1.1.2.1 | Estimar Tamanho do Projeto | 2.12d | 2016-09-06 A | 2016-09-08 A | 8 | 100% |  | 1h | 1h |
| 11 | 1.1.2.2 | Revisar Estimativa de Tamanho do Projeto | 1d | 2016-09-08 A | 2016-09-09 A | 10 | 100% |  | 1h | 1h |
| 12 | 1.1.3 | **CRP e ORP - Cronograma e Orçamentos Preliminar** | 4.12d | 2016-09-06 A | 2016-09-12 A |  | 100% |  | 2.5h | 2.5h |
| 13 | 1.1.3.1 | Elaborar Cronograma e Orçamento Preliminar | 3.12d | 2016-09-06 A | 2016-09-09 A | 8 | 100% |  | 1.5h | 1.5h |
| 14 | 1.1.3.2 | Revisar Cronograma e Orçamento Preliminar | 1d | 2016-09-09 A | 2016-09-12 A | 13 | 100% |  | 1h | 1h |
| 15 | 1.2 | **Planejamento** | 3d? | 2016-09-06 A | 2016-09-09 A |  | 100% |  | 13.5h | 13.5h |
| 16 | 1.2.1 | **Plano de Projeto** | 2d? | 2016-09-06 A | 2016-09-08 A |  | 100% |  | 7h | 7h |
| 17 | 1.2.1.1 | Elaborar Plano de Projeto | 1d? | 2016-09-06 A | 2016-09-07 A | 8 | 100% |  | 5h | 5h |
| 18 | 1.2.1.2 | Revisar Plano de Projeto | 1d? | 2016-09-07 A | 2016-09-08 A | 17 | 100% |  | 2h | 2h |
| 19 | 1.2.2 | **EAP** | 2d? | 2016-09-06 A | 2016-09-08 A |  | 100% |  | 2h | 2h |
| 20 | 1.2.2.1 | Elaborar EAP | 1d? | 2016-09-06 A | 2016-09-07 A | 8 | 100% |  | 1h | 1h |
| 21 | 1.2.2.2 | Revisar EAP | 1d? | 2016-09-07 A | 2016-09-08 A | 20 | 100% |  | 1h | 1h |
| 22 | 1.2.3 | **ETD - Estimativa de Tamanho Definitiva** | 2d? | 2016-09-06 A | 2016-09-08 A |  | 100% |  | 3h | 3h |
| 23 | 1.2.3.1 | Elaborar ETD | 1d? | 2016-09-06 A | 2016-09-07 A | 8 | 100% |  | 2h | 2h |
| 24 | 1.2.3.2 | Revisar ETD | 1d? | 2016-09-07 A | 2016-09-08 A | 23 | 100% |  | 1h | 1h |

| ID | WBS | Task | Duration | Start | Finish | Predecessors | Complete | Remaining | Total slack | Free slack | Work | Actual work |
| --- | --- | --- | --- | --- | --- | --- | --- | --- | --- | --- | --- | --- |
| 25 | 1.2.4 | **Revisão e Aprovação - Planejamento** | 1d? | 2016-09-08 A | 2016-09-09 A |  | 100% |  |  |  | 1.5h | 1.5h |
| 26 | 1.2.4.1 | Aprovar Plano de Projeto | 1d? | 2016-09-08 A | 2016-09-09 A | 18 | 100% |  |  |  | 0.5h | 0.5h |
| 27 | 1.2.4.2 | Aprovar EAP | 1d? | 2016-09-08 A | 2016-09-09 A | 21 | 100% |  |  |  | 0.5h | 0.5h |
| 28 | 1.2.4.3 | Aprovar ETD | 1d? | 2016-09-08 A | 2016-09-09 A | 24 | 100% |  |  |  | 0.5h | 0.5h |
| 29 | 1.3 | **Análise** | 6d? | 2016-09-09 A | 2016-09-19 A |  | 100% |  |  |  | 38h | 38h |
| 30 | 1.3.1 | **Documento de Requisitos** | 4d? | 2016-09-09 A | 2016-09-15 A |  | 100% |  |  |  | 30h | 30h |
| 31 | 1.3.1.1 | Reunir-se com cliente | 1d? | 2016-09-09 A | 2016-09-12 A | 25 | 100% |  |  |  | 2h | 2h |
| 32 | 1.3.1.2 | Elaborar DRE | 1d? | 2016-09-12 A | 2016-09-13 A | 31 | 100% |  |  |  | 25h | 25h |
| 33 | 1.3.1.3 | Revisar DRE | 1d? | 2016-09-13 A | 2016-09-14 A | 32 | 100% |  |  |  | 2h | 2h |
| 34 | 1.3.1.4 | Submeter DRE para aprovação do cliente | 1d? | 2016-09-14 A | 2016-09-15 A | 33 | 100% |  |  |  | 1h | 1h |
| 35 | 1.3.2 | **MRB - Matriz de Rastreabilidade** | 2d? | 2016-09-15 A | 2016-09-19 A |  | 100% |  |  |  | 8h | 8h |
| 36 | 1.3.2.1 | Elaborar Matriz de Rastreabilidade | 1d? | 2016-09-15 A | 2016-09-16 A | 34 | 100% |  |  |  | 6h | 6h |
| 37 | 1.3.2.2 | Revisar Matriz de Rastreabilidade | 1d? | 2016-09-16 A | 2016-09-19 A | 36 | 100% |  |  |  | 2h | 2h |
| 38 | 1.4 | **Modelagem UML** | 3d? | 2016-09-19 A | 2016-09-22 A |  | 100% |  |  |  | 5h | 5h |
| 39 | 1.4.1 | **Diagrama de Classes** | 3d? | 2016-09-19 A | 2016-09-22 A |  | 100% |  |  |  | 2h | 2h |
| 40 | 1.4.1.1 | Elaborar Diagrama de Classes | 1d? | 2016-09-19 A | 2016-09-20 A | 29 | 100% |  |  |  | 1h | 1h |
| 41 | 1.4.1.2 | Revisar Diagrama de Classes | 1d? | 2016-09-20 A | 2016-09-21 A | 40 | 100% |  |  |  | 0.5h | 0.5h |
| 42 | 1.4.1.3 | Atualizar MRB | 1d? | 2016-09-21 A | 2016-09-22 A | 41 | 100% |  |  |  | 0.5h | 0.5h |
| 43 | 1.4.2 | **MER - Modelo Entidade Relacionamento** | 2d? | 2016-09-19 A | 2016-09-21 A |  | 100% |  |  |  | 3h | 3h |
| 44 | 1.4.2.1 | Elaborar MER | 1d? | 2016-09-19 A | 2016-09-20 A | 29 | 100% |  |  |  | 2h | 2h |
| 45 | 1.4.2.2 | Revisar MER | 1d? | 2016-09-20 A | 2016-09-21 A | 44 | 100% |  |  |  | 1h | 1h |
| 46 | 1.5 | **Implementação/Teste** | 39d? | 2016-09-22 A | 2016-11-16 |  | 23% | 30.09d? | 1.25d | 0d | 122.5h | 28h |
| 47 | 1.5.1 | **Release 01** | 9d? | 2016-09-22 A | 2016-10-05 A |  | 100% |  |  |  | 28h | 28h |
| 48 | 1.5.1.1 | **Implementação** | 8d? | 2016-09-22 A | 2016-10-04 A |  | 100% |  |  |  | 24h | 24h |
| 49 | 1.5.1.1.1 | [RFS01] Adicionar Usuário | 1d | 2016-09-22 A | 2016-09-23 A | 38 | 100% |  |  |  | 3h | 3h |
| 50 | 1.5.1.1.2 | [RFS02] Editar Usuário | 1d | 2016-09-23 A | 2016-09-26 A | 49 | 100% |  |  |  | 3h | 3h |
| 51 | 1.5.1.1.3 | [RFS03] Consultar Usuário | 1d | 2016-09-26 A | 2016-09-27 A | 50 | 100% |  |  |  | 3h | 3h |
| 52 | 1.5.1.1.4 | [RFS04] Excluir Usuário | 1d | 2016-09-27 A | 2016-09-28 A | 51 | 100% |  |  |  | 3h | 3h |
| 53 | 1.5.1.1.5 | [RFS05] Cadastrar Projeto Candidato | 1d? | 2016-09-28 A | 2016-09-29 A | 52 | 100% |  |  |  | 3h | 3h |
| 54 | 1.5.1.1.6 | [RFS06] Listar Projetos Candidatos | 1d? | 2016-09-29 A | 2016-09-30 A | 53 | 100% |  |  |  | 3h | 3h |
| 55 | 1.5.1.1.7 | [RFS07] Alterar Projetos Candidatos | 1d? | 2016-09-30 A | 2016-10-03 A | 54 | 100% |  |  |  | 3h | 3h |
| 56 | 1.5.1.1.8 | [RFS08] Remover Projetos Candidatos | 1d? | 2016-10-03 A | 2016-10-04 A | 55 | 100% |  |  |  | 3h | 3h |

| ID | WBS | Task | Duration | Start | Finish | Predecessors | Complete | Total slack | Free slack | Work | Actual work |
| --- | --- | --- | --- | --- | --- | --- | --- | --- | --- | --- | --- |
| 57 | 1.5.1.2 | **Teste - Selenium** | 1d? | 2016-10-04 A | 2016-10-05 A |  | 100% |  |  | 4h | 4h |
| 58 | 1.5.1.2.1 | Testar [RFS01] | 1d? | 2016-10-04 A | 2016-10-05 A | 48 | 100% |  |  | 0.5h | 0.5h |
| 59 | 1.5.1.2.2 | Testar [RFS02] | 1d | 2016-10-04 A | 2016-10-05 A | 48 | 100% |  |  | 0.5h | 0.5h |
| 60 | 1.5.1.2.3 | Testar [RFS03] | 1d | 2016-10-04 A | 2016-10-05 A | 48 | 100% |  |  | 0.5h | 0.5h |
| 61 | 1.5.1.2.4 | Testar [RFS04] | 1d? | 2016-10-04 A | 2016-10-05 A | 48 | 100% |  |  | 0.5h | 0.5h |
| 62 | 1.5.1.2.5 | Testar [RFS05] | 1d? | 2016-10-04 A | 2016-10-05 A | 48 | 100% |  |  | 0.5h | 0.5h |
| 63 | 1.5.1.2.6 | Testar [RFS06] | 1d? | 2016-10-04 A | 2016-10-05 A | 48 | 100% |  |  | 0.5h | 0.5h |
| 64 | 1.5.1.2.7 | Testar [RFS07] | 1d? | 2016-10-04 A | 2016-10-05 A | 48 | 100% |  |  | 0.5h | 0.5h |
| 65 | 1.5.1.2.8 | Testar [RFS08] | 1d? | 2016-10-04 A | 2016-10-05 A | 48 | 100% |  |  | 0.5h | 0.5h |
| 66 | 1.5.2 | **Release 02** | 10d? | 2016-10-05 | 2016-10-19 |  |  | 1.25d |  | 35h |  |
| 67 | 1.5.2.1 | **Implementação** | 9d? | 2016-10-05 | 2016-10-18 |  |  | 1.25d | 0d | 30h |  |
| 68 | 1.5.2.1.1 | [RFS09] Cadastrar Critério de Avaliação | 1d? | 2016-10-05 | 2016-10-06 | 57 |  | 1.25d | 0d | 3h |  |
| 69 | 1.5.2.1.2 | [RFS10] Listar Critério de Avaliação | 1d? | 2016-10-06 | 2016-10-07 | 68 |  | 1.25d | 0d | 3h |  |
| 70 | 1.5.2.1.3 | [RFS11] Alterar Critério de Avaliação | 1d? | 2016-10-07 | 2016-10-10 | 69 |  | 1.25d | 0d | 3h |  |
| 71 | 1.5.2.1.4 | [RFS12] Desativar Critério de Avaliação | 1d? | 2016-10-10 | 2016-10-11 | 70 |  | 1.25d | 0d | 3h |  |
| 72 | 1.5.2.1.5 | [RFS13] Avaliar Projeto Candidato | 1d? | 2016-10-11 | 2016-10-12 | 71 |  | 1.25d | 0d | 3h |  |
| 73 | 1.5.2.1.6 | [RFS14] Consultar Avaliação do Projeto Candidato | 1d? | 2016-10-12 | 2016-10-13 | 72 |  | 1.25d | 0d | 3h |  |
| 74 | 1.5.2.1.7 | [RFS15] Alterar Avaliação do Projeto Candidato | 1d? | 2016-10-13 | 2016-10-14 | 73 |  | 1.25d | 0d | 3h |  |
| 75 | 1.5.2.1.8 | [RFS16] Cadastrar Valor de Repasse Financeiro | 1d? | 2016-10-14 | 2016-10-17 | 74 |  | 1.25d | 0d | 3h |  |
| 76 | 1.5.2.1.9 | [RFS17] Consultar Valor de Repasse Financeiro | 1d? | 2016-10-17 | 2016-10-18 | 75 |  | 1.25d |  | 3h |  |
| 77 | 1.5.2.1.10 | [RFS18] Alterar Valor de Repasse Financeiro | 1d? | 2016-10-17 | 2016-10-18 | 75 |  | 1.25d |  | 3h |  |
| 78 | 1.5.2.2 | **Teste - Selenium** | 1d? | 2016-10-18 | 2016-10-19 |  |  | 1.25d | 0d | 5h |  |
| 79 | 1.5.2.2.1 | Testar [RFS09] | 1d? | 2016-10-18 | 2016-10-19 | 67 |  | 1.25d |  | 0.5h |  |
| 80 | 1.5.2.2.2 | Testar [RFS10] | 1d? | 2016-10-18 | 2016-10-19 | 67 |  | 1.25d |  | 0.5h |  |
| 81 | 1.5.2.2.3 | Testar [RFS11] | 1d? | 2016-10-18 | 2016-10-19 | 67 |  | 1.25d |  | 0.5h |  |
| 82 | 1.5.2.2.4 | Testar [RFS12] | 1d? | 2016-10-18 | 2016-10-19 | 67 |  | 1.25d |  | 0.5h |  |
| 83 | 1.5.2.2.5 | Testar [RFS13] | 1d? | 2016-10-18 | 2016-10-19 | 67 |  | 1.25d |  | 0.5h |  |
| 84 | 1.5.2.2.6 | Testar [RFS14] | 1d? | 2016-10-18 | 2016-10-19 | 67 |  | 1.25d |  | 0.5h |  |
| 85 | 1.5.2.2.7 | Testar [RFS15] | 1d? | 2016-10-18 | 2016-10-19 | 67 |  | 1.25d |  | 0.5h |  |
| 86 | 1.5.2.2.8 | Testar [RFS16] | 1d? | 2016-10-18 | 2016-10-19 | 67 |  | 1.25d |  | 0.5h |  |
| 87 | 1.5.2.2.9 | Testar [RFS17] | 1d? | 2016-10-18 | 2016-10-19 | 67 |  | 1.25d |  | 0.5h |  |
| 88 | 1.5.2.2.10 | Testar [RFS18] | 1d? | 2016-10-18 | 2016-10-19 | 67 |  | 1.25d |  | 0.5h |  |

| ID | WBS | Task | Duration | Start | Finish | Predecessors | Total slack | Free slack | Work |
| --- | --- | --- | --- | --- | --- | --- | --- | --- | --- |
| 89 | 1.5.3 | **Release 03** | 9d? | 2016-10-19 | 2016-11-01 |  | 1.25d |  | 28h |
| 90 | 1.5.3.1 | **Implementação** | 8d? | 2016-10-19 | 2016-10-31 |  | 1.25d | 0d | 24h |
| 91 | 1.5.3.1.1 | [RFS19] Aprovar Projeto Candidato | 1d? | 2016-10-19 | 2016-10-20 | 78 | 1.25d | 0d | 3h |
| 92 | 1.5.3.1.2 | [RFS20] Consultar Projeto Aprovado | 1d? | 2016-10-20 | 2016-10-21 | 91 | 1.25d | 0d | 3h |
| 93 | 1.5.3.1.3 | [RFS21] Finalizar Projeto Aprovado | 1d? | 2016-10-21 | 2016-10-24 | 92 | 1.25d | 0d | 3h |
| 94 | 1.5.3.1.4 | [RFS22] Cadastrar Cotas de Financiamento | 1d? | 2016-10-24 | 2016-10-25 | 93 | 1.25d | 0d | 3h |
| 95 | 1.5.3.1.5 | [RFS23] Consultar Cotas de Financiamento | 1d? | 2016-10-25 | 2016-10-26 | 94 | 1.25d | 0d | 3h |
| 96 | 1.5.3.1.6 | [RFS24] Inserir Edital | 1d? | 2016-10-26 | 2016-10-27 | 95 | 1.25d | 0d | 3h |
| 97 | 1.5.3.1.7 | [RFS25] Consultar Edital | 1d? | 2016-10-27 | 2016-10-28 | 96 | 1.25d | 0d | 3h |
| 98 | 1.5.3.1.8 | [RFS26] Retificar Edital | 1d? | 2016-10-28 | 2016-10-31 | 97 | 1.25d |  | 3h |
| 99 | 1.5.3.2 | **Teste - Selenium** | 1d? | 2016-10-31 | 2016-11-01 |  | 1.25d | 0d | 4h |
| 100 | 1.5.3.2.1 | Testar [RFS19] | 1d? | 2016-10-31 | 2016-11-01 | 90 | 1.25d |  | 0.5h |
| 101 | 1.5.3.2.2 | Testar [RFS20] | 1d? | 2016-10-31 | 2016-11-01 | 90 | 1.25d |  | 0.5h |
| 102 | 1.5.3.2.3 | Testar [RFS21] | 1d? | 2016-10-31 | 2016-11-01 | 90 | 1.25d |  | 0.5h |
| 103 | 1.5.3.2.4 | Testar [RFS22] | 1d? | 2016-10-31 | 2016-11-01 | 90 | 1.25d |  | 0.5h |
| 104 | 1.5.3.2.5 | Testar [RFS23] | 1d? | 2016-10-31 | 2016-11-01 | 90 | 1.25d |  | 0.5h |
| 105 | 1.5.3.2.6 | Testar [RFS24] | 1d? | 2016-10-31 | 2016-11-01 | 90 | 1.25d |  | 0.5h |
| 106 | 1.5.3.2.7 | Testar [RFS25] | 1d? | 2016-10-31 | 2016-11-01 | 90 | 1.25d |  | 0.5h |
| 107 | 1.5.3.2.8 | Testar [RFS26] | 1d? | 2016-10-31 | 2016-11-01 | 90 | 1.25d |  | 0.5h |
| 108 | 1.5.4 | **Release 04** | 11d? | 2016-11-01 | 2016-11-16 |  | 1.25d |  | 31.5h |
| 109 | 1.5.4.1 | **Implementação** | 10d? | 2016-11-01 | 2016-11-15 |  | 1.25d | 0d | 27.5h |
| 110 | 1.5.4.1.1 | [RFS27] Definir Restrições para Financiamento de Projetos | 1d? | 2016-11-01 | 2016-11-02 | 99 | 1.25d | 0d | 3h |
| 111 | 1.5.4.1.2 | [RFS28] Financiar Projeto | 1d? | 2016-11-02 | 2016-11-03 | 110 | 1.25d | 0d | 3h |
| 112 | 1.5.4.1.3 | [RFS29] Consultar Financiamento | 1d? | 2016-11-03 | 2016-11-04 | 111 | 1.25d | 0d | 3h |
| 113 | 1.5.4.1.4 | [RFS30] Atribuir Recompensa | 1d? | 2016-11-04 | 2016-11-07 | 112 | 1.25d | 0d | 3h |
| 114 | 1.5.4.1.5 | [RFS31] Consultar Recompensa | 1d? | 2016-11-07 | 2016-11-08 | 113 | 1.25d | 0d | 3h |
| 115 | 1.5.4.1.6 | [RFS32] Alterar Recompensa | 1d? | 2016-11-08 | 2016-11-09 | 114 | 1.25d | 0d | 3h |
| 116 | 1.5.4.1.7 | [RFS33] Excluir Recompensa | 1d? | 2016-11-09 | 2016-11-10 | 115 | 1.25d | 0d | 3h |
| 117 | 1.5.4.1.8 | [RFS34] Gerar Relatório dos Projetos por Categoria | 1d? | 2016-11-10 | 2016-11-11 | 116 | 1.25d | 0d | 3h |
| 118 | 1.5.4.1.9 | [RFS35] Gerar Relatório de Investimentos Financeiros | 1d? | 2016-11-11 | 2016-11-14 | 117 | 1.25d | 0d | 3h |
| 119 | 1.5.4.1.10 | Testar [RFS27] | 1d? | 2016-11-14 | 2016-11-15 | 118 | 1.25d |  | 0.5h |

| ID | WBS | Task | Type | Duration | Start | Finish | Predecessors | Total slack | Free slack | Work |
| --- | --- | --- | --- | --- | --- | --- | --- | --- | --- | --- |
| 120 | 1.5.4.2 | **Teste - Selenium** |  | 1d? | 2016-11-15 | 2016-11-16 |  | 1.25d | 0d | 4h |
| 121 | 1.5.4.2.1 | Testar [RFS28] |  | 1d? | 2016-11-15 | 2016-11-16 | 109 | 1.25d |  | 0.5h |
| 122 | 1.5.4.2.2 | Testar [RFS29] |  | 1d? | 2016-11-15 | 2016-11-16 | 109 | 1.25d |  | 0.5h |
| 123 | 1.5.4.2.3 | Testar [RFS30] |  | 1d? | 2016-11-15 | 2016-11-16 | 109 | 1.25d |  | 0.5h |
| 124 | 1.5.4.2.4 | Testar [RFS31] |  | 1d? | 2016-11-15 | 2016-11-16 | 109 | 1.25d |  | 0.5h |
| 125 | 1.5.4.2.5 | Testar [RFS32] |  | 1d? | 2016-11-15 | 2016-11-16 | 109 | 1.25d |  | 0.5h |
| 126 | 1.5.4.2.6 | Testar [RFS33] |  | 1d? | 2016-11-15 | 2016-11-16 | 109 | 1.25d |  | 0.5h |
| 127 | 1.5.4.2.7 | Testar [RFS34] |  | 1d? | 2016-11-15 | 2016-11-16 | 109 | 1.25d |  | 0.5h |
| 128 | 1.5.4.2.8 | Testar [RFS35] |  | 1d? | 2016-11-15 | 2016-11-16 | 109 | 1.25d |  | 0.5h |
| 129 | 1.6 | **Implantação** |  | 3d? | 2016-11-16 | 2016-11-21 |  | 1.25d |  | 3.5h |
| 130 | 1.6.1 | **PIM - Plano de Implantação** |  | 3d? | 2016-11-16 | 2016-11-21 |  | 1.25d |  | 3.5h |
| 131 | 1.6.1.1 | Elaborar PIM |  | 1d? | 2016-11-16 | 2016-11-17 | 120 | 1.25d | 0d | 2h |
| 132 | 1.6.1.2 | Revisar PIM |  | 1d? | 2016-11-17 | 2016-11-18 | 131 | 1.25d | 0d | 1h |
| 133 | 1.6.1.3 | Aprovar PIM |  | 1d? | 2016-11-18 | 2016-11-21 | 132 | 1.25d |  | 0.5h |
| 134 | 1.7 | **Fechamento** |  | 2d? | 2016-11-16 | 2016-11-18 |  | 2.25d |  | 20h |
| 135 | 1.7.1 | **Monitoramento e Controle** |  | 1d? | 2016-11-16 | 2016-11-17 |  | 3.25d |  | 10h |
| 136 | 1.7.1.1 | Acompanhar Projeto |  | 1d? | 2016-11-16 | 2016-11-17 | 46 | 3.25d |  | 10h |
| 137 | 1.7.2 | **Gerência de Configuração** |  | 2d? | 2016-11-16 | 2016-11-18 |  | 2.25d |  | 10h |
| 138 | 1.7.2.1 | Elaborar Branch |  | 1d? | 2016-11-16 | 2016-11-17 | 46 | 2.25d | 0d | 2h |
| 139 | 1.7.2.2 | Realizar Merge da Branch para a Trunk |  | 1d? | 2016-11-17 | 2016-11-18 | 138 | 2.25d |  | 8h |
| 140 | 1.8 | **Controle de Mudanças** |  | 1d? | 2016-11-16 | 2016-11-17 |  | 0d |  | 8h |
| 141 | 1.8.1 | **RSM - Registro de Solicitação de Mudanças** |  | 1d? | 2016-11-16 | 2016-11-17 |  | 0d |  | 8h |
| 142 | 1.8.1.1 | Registrar mudanças | manual | 1d? | 2016-11-16 | 2016-11-17 | 46 |  |  | 8h |
